Schedule from MS Project, 2024-04-01 to 2024-12-16, A marks actual dates.
Microsoft

## Calendars

- 标准: Mon-Fri 08:00-12:00, 13:00-17:00; Sat-Sun off. Exceptions (off unless hours are given): 2024-04-06 08:00-12:00, 13:00-17:00.

## Resources

| Resource |
| --- |
| 杨昆龙 |
| 张涛 |
| 李静 |
| 王强 |
| 赵磊 |
| 刘洋 |
| 孙伟 |
| 周敏 |
| 吴迪 |
| 陈晨 |
| 郭明 |
| 邓丽 |

## Schedule

| ID | WBS | Task | Type | Duration | Start | Finish | Predecessors | Complete | Remaining | Actual start | Baseline start | Baseline finish | Baseline duration | Total slack | Free slack | Constraint | Deadline | Resources | Work | Actual work |
| --- | --- | --- | --- | --- | --- | --- | --- | --- | --- | --- | --- | --- | --- | --- | --- | --- | --- | --- | --- | --- |
| 1 | 1 | **项目启动** |  | 11d | 2024-04-01 A | 2024-04-15 |  | 99% | 0d |  | 2024-04-01 | 2024-04-15 | 11d |  |  |  | 2024-04-15 |  | 280h | 280h |
| 2 | 1.1 | 制定项目章程 |  | 5d | 2024-04-01 A | 2024-04-05 A |  | 100% |  |  | 2024-04-01 | 2024-04-05 | 5d |  |  | finish no earlier than 2024-04-05 |  | 杨昆龙; 张涛; 李静; 孙伟 | 160h | 160h |
| 3 | 1.2 | 项目章程批准 | milestone | 0d | 2024-04-05 A | 2024-04-06 A | 2 | 100% |  |  | 2024-04-05 | 2024-04-06 | 0d |  |  |  |  | 杨昆龙; 张涛; 李静; 孙伟 |  |  |
| 4 | 1.3 | 确定项目范围 |  | 3d | 2024-04-08 A | 2024-04-11 A | 2 | 100% |  |  | 2024-04-08 | 2024-04-11 | 3d |  |  | start no earlier than 2024-04-08 |  | 杨昆龙; 张涛; 孙伟 | 72h | 72h |
| 5 | 1.4 | 项目范围说明书制定完成 | milestone | 0d | 2024-04-11 | 2024-04-11 | 4 |  |  |  | 2024-04-11 | 2024-04-11 | 0d | 2.88d |  |  |  | 杨昆龙; 张涛; 孙伟 |  |  |
| 6 | 1.5 | 制定项目管理计划 |  | 2d | 2024-04-11 A | 2024-04-15 A | 4 | 100% |  |  | 2024-04-11 | 2024-04-15 | 2d |  |  | start no earlier than 2024-04-11 |  | 杨昆龙; 张涛; 李静 | 48h | 48h |
| 7 | 1.6 | 项目管理计划制定完成 | milestone | 0d | 2024-04-15 | 2024-04-15 | 6 |  |  |  | 2024-04-15 | 2024-04-15 | 0d | 0.88d |  |  |  | 杨昆龙; 张涛; 李静 |  |  |
| 8 | 2 | **需求分析** |  | 22d | 2024-04-16 | 2024-05-15 |  | 25% | 16.5d | 2024-04-17 | 2024-04-16 | 2024-05-15 | 22d |  |  |  | 2024-05-15 |  | 480h | 120h |
| 9 | 2.1 | 收集和分析用户需求 |  | 18d | 2024-04-17 A | 2024-05-10 | 6 | 28% | 13d |  | 2024-04-17 | 2024-05-10 | 18d | 1d | 0.12d | finish no earlier than 2024-05-10 |  | 杨昆龙; 张涛; 邓丽 | 432h | 120h |
| 10 | 2.2 | 编写需求规格说明书 |  | 2d | 2024-05-13 | 2024-05-15 | 9 |  |  |  | 2024-05-13 | 2024-05-15 | 3d | 0.88d | 0d | start no earlier than 2024-05-13 |  | 杨昆龙; 张涛; 邓丽 | 48h |  |
| 11 | 2.3 | 需求规格说明书完成 | milestone | 0d | 2024-05-15 | 2024-05-15 | 10 |  |  |  |  |  |  | 0.88d |  |  |  | 杨昆龙; 张涛; 邓丽 |  |  |
| 12 | 3 | **系统设计** |  | 22d | 2024-05-16 | 2024-06-14 | 1, 8 |  |  |  | 2024-05-16 | 2024-06-14 | 22d |  |  |  |  |  | 832h |  |
| 13 | 3.1 | 设计并实现系统的整体架构 |  | 11d | 2024-05-16 | 2024-05-31 | 1, 8 |  |  |  | 2024-05-16 | 2024-06-03 | 12d | 66.75d | 0d | start no earlier than 2024-05-16 |  | 陈晨; 李静; 张涛 | 264h |  |
| 14 | 3.2 | 系统架构设计文档完成 | milestone | 0d | 2024-05-31 | 2024-05-31 | 13 |  |  |  |  |  |  | 66.75d |  |  |  | 陈晨; 李静; 张涛 |  |  |
| 15 | 3.3 | 设计并实现数据库结构 |  | 9d | 2024-05-21 | 2024-05-31 | 1, 8 |  |  |  | 2024-05-20 | 2024-06-10 | 16d | 65.88d | 0d | finish no earlier than 2024-05-31 |  | 刘洋; 邓丽; 郭明 | 216h |  |
| 16 | 3.4 | 数据库设计文档完成 | milestone | 0d | 2024-05-31 | 2024-05-31 | 15 |  |  |  |  |  |  | 65.88d |  |  |  | 刘洋; 邓丽; 郭明 |  |  |
| 17 | 3.5 | 设计用户界面 |  | 22d | 2024-05-16 | 2024-06-14 | 1, 8 |  |  |  | 2024-05-16 | 2024-06-14 | 22d | 80d | 0d | finish no earlier than 2024-06-14 |  | 王强; 赵磊 | 352h |  |
| 18 | 3.6 | 界面设计原型完成 | milestone | 0d | 2024-06-14 | 2024-06-14 | 17 |  |  |  |  |  |  | 131d |  | finish no earlier than 2024-06-14 |  | 李静; 王强; 张涛; 赵磊; 陈晨 |  |  |
| 19 | 4 | **开发阶段** |  | 76d | 2024-06-17 | 2024-09-30 | 1, 8, 12 |  |  |  | 2024-06-17 | 2024-09-30 | 76d |  |  |  |  |  | 4557h |  |
| 20 | 4.1 | 编写系统核心功能代码 |  | 75.12d | 2024-06-17 | 2024-09-30 | 13 |  |  |  | 2024-06-17 | 2024-09-30 | 75d | 55.88d | 0.88d | start no earlier than 2024-06-17 |  | 刘洋; 李静; 赵磊; 王强 | 2400h |  |
| 21 | 4.2 | 进行单元测试和集成测试 |  | 54d | 2024-07-16 | 2024-09-30 |  |  |  |  | 2024-07-01 | 2024-09-30 | 65d | 55.88d | 0.88d | start no earlier than 2024-07-16 |  | 孙伟; 邓丽; 杨昆龙; 周敏; 郭明 | 2157h |  |
| 22 | 4.3 | 核心功能开发完成并通过测试 | milestone | 0d | 2024-09-30 | 2024-09-30 | 20, 21 |  |  |  |  |  |  | 55d |  | finish no earlier than 2024-09-30 |  | 孙伟; 吴迪; 赵磊; 周敏; 郭明 |  |  |
| 23 | 5 | **测试阶段** |  | 77d | 2024-07-01 | 2024-10-15 | 1, 8, 12 |  |  |  | 2024-07-01 | 2024-10-15 | 77d |  |  |  |  |  | 632h |  |
| 24 | 5.1 | 制定测试计划 |  | 11d | 2024-07-01 | 2024-07-15 | 13, 15, 17 |  |  |  | 2024-07-01 | 2024-07-15 | 11d | 70d | 59d | finish no earlier than 2024-07-15 |  | 陈晨; 孙伟; 吴迪; 周敏 | 352h |  |
| 25 | 5.2 | 执行系统测试 |  | 7d | 2024-10-07 | 2024-10-15 | 24 |  |  |  | 2024-10-07 | 2024-10-15 | 7d | 11d | 0d | finish no earlier than 2024-10-15 |  | 陈晨; 孙伟; 吴迪; 周敏; 郭明 | 280h |  |
| 26 | 5.3 | 系统测试报告完成 | milestone | 0d | 2024-10-15 | 2024-10-15 | 24, 25 |  |  |  |  |  |  | 44d |  | finish no earlier than 2024-10-15 |  | 陈晨; 孙伟; 吴迪; 周敏; 郭明 |  |  |

Notes:
- 1: 这是摘要任务。使用摘要任务以帮助您在节中组织项目。
- 13: 在其旁边带有图钉的任务为手动计划任务。当您不想让 Project 移动任务时请使用它们。如果您尚未获得所有信息，您也可以在工期、开始和完成字段输入任意文本或将其保留为空。

| ID | WBS | Task | Type | Duration | Start | Finish | Predecessors | Baseline start | Baseline finish | Baseline duration | Total slack | Free slack | Constraint | Resources | Work |
| --- | --- | --- | --- | --- | --- | --- | --- | --- | --- | --- | --- | --- | --- | --- | --- |
| 27 | 6 | **部署阶段** |  | 23d | 2024-10-16 | 2024-11-15 | 1, 8, 12, 19, 23 | 2024-10-16 | 2024-11-15 | 23d |  |  |  |  | 608h |
| 28 | 6.1 | 部署系统到生产环境 |  | 12d | 2024-10-16 | 2024-10-31 | 25 | 2024-10-16 | 2024-10-31 | 12d | 11d | 0d | finish no earlier than 2024-10-31 | 陈晨; 郭明; 周敏 | 288h |
| 29 | 6.2 | 系统部署完成 | milestone | 0d | 2024-10-31 | 2024-10-31 | 28 |  |  |  | 32d |  | finish no earlier than 2024-10-31 | 陈晨; 郭明; 周敏 |  |
| 30 | 6.3 | 提供用户培训 |  | 10d | 2024-11-01 | 2024-11-15 | 28 | 2024-11-01 | 2024-11-15 | 10d | 10.88d | 0.88d | start no earlier than 2024-11-01 | 杨昆龙; 陈晨; 郭明; 周敏 | 320h |
| 31 | 6.4 | 用户培训通过 | milestone | 0d | 2024-11-15 | 2024-11-15 | 30 |  |  |  | 21d |  | finish no earlier than 2024-11-15 | 杨昆龙; 陈晨; 郭明; 周敏 |  |
| 32 | 7 | **项目收尾** |  | 22d | 2024-11-16 | 2024-12-16 | 1, 8, 12, 19, 23, 27 | 2024-11-16 | 2024-12-16 | 22d |  |  |  |  | 752h |
| 33 | 7.1 | 编写项目总结报告 |  | 10d | 2024-11-18 | 2024-11-29 | 1, 8, 12, 19, 23, 27, 30 | 2024-11-18 | 2024-11-29 | 10d | 11d | 0d | finish no earlier than 2024-11-29 | 杨昆龙; 邓丽; 张涛; 周敏; 郭明 | 400h |
| 34 | 7.2 | 项目总结报告完成 | milestone | 0d | 2024-11-29 | 2024-11-29 | 33 |  |  |  | 11d |  | finish no earlier than 2024-11-29 | 杨昆龙; 邓丽; 张涛; 周敏; 郭明 |  |
| 35 | 7.3 | 进行项目审计 |  | 11d | 2024-12-02 | 2024-12-16 | 1, 8, 12, 19, 23, 27, 30 | 2024-12-02 | 2024-12-16 | 11d | 0d |  | finish no earlier than 2024-12-16 | 杨昆龙; 邓丽; 张涛; 周敏 | 352h |
| 36 | 7.4 | 项目审计报告完成 | milestone | 0d | 2024-12-16 | 2024-12-16 | 35 |  |  |  | 0d |  | finish no earlier than 2024-04-16 | 杨昆龙; 邓丽; 张涛; 周敏 |  |
